How a schedule from an exported table changed from version to version. A marks actual dates.

## Version 1 (saved 2026-07-14)

Note of the change: [gen] task_graph + schedule job/JOB-01KXFPGEEC0WPPWXGDTMP8TWRJ (nodes=99)

| ID | Task | Start | Finish |
| --- | --- | --- | --- |
| general.permitting | Building permit walk-in | 2026-09-21 | 2026-09-21 |
| general.pre_construction_walkthrough | Pre-construction walkthrough with customer | 2026-09-28 | 2026-09-28 |
| checkpoint.selections_finalized | Customer selections finalized | 2026-09-21 | 2026-09-21 |
| permit.tdec_septic | TDEC septic permit application & review | 2026-08-28 | 2026-10-09 |
| prep.amperage_check | Verify existing service capacity for new subpanel | 2026-09-21 | 2026-09-21 |
| checkpoint.equipment_confirmed_demo | Confirm demo equipment (dumpster, saw) | 2026-09-28 | 2026-09-28 |
| checkpoint.equipment_confirmed_excavation | Confirm mini-ex + concrete supplier | 2026-09-28 | 2026-09-28 |
| checkpoint.equipment_confirmed_roof | Confirm scaffolding for roof | 2026-09-28 | 2026-09-28 |
| checkpoint.equipment_confirmed_drywall | Confirm drywall dumpster swap | 2026-09-28 | 2026-09-28 |
| order.windows | Order windows & exterior door | 2026-10-12 | 2026-10-12 |
| wait.windows | Windows supplier lead time | 2026-10-12 | 2026-11-02 |
| checkpoint.windows_arrived | Windows delivered to site | 2026-11-02 | 2026-11-02 |
| order.lvl | Order LVL beam (3-ply 14") | 2026-10-12 | 2026-10-12 |
| wait.lvl | LVL supplier lead time | 2026-10-12 | 2026-10-26 |
| checkpoint.lvl_arrived | LVL delivered to site | 2026-10-26 | 2026-10-26 |
| order.subpanel | Order 100A subpanel | 2026-10-12 | 2026-10-12 |
| wait.subpanel | Subpanel supplier lead time | 2026-10-12 | 2026-10-22 |
| checkpoint.subpanel_arrived | Subpanel delivered | 2026-10-22 | 2026-10-22 |
| order.minisplit | Order mini-split unit | 2026-10-12 | 2026-10-12 |
| wait.minisplit | Mini-split supplier lead time | 2026-10-12 | 2026-10-22 |
| checkpoint.minisplit_arrived | Mini-split delivered | 2026-10-22 | 2026-10-22 |
| order.tankless | Order tankless water heater | 2026-10-12 | 2026-10-12 |
| wait.tankless | Tankless supplier lead time | 2026-10-12 | 2026-10-22 |
| checkpoint.tankless_arrived | Tankless delivered | 2026-10-22 | 2026-10-22 |
| order.tile | Order tile (shower + floor) | 2026-10-12 | 2026-10-12 |
| wait.tile | Tile supplier lead time | 2026-10-12 | 2026-11-02 |
| checkpoint.tile_arrived | Tile delivered | 2026-11-02 | 2026-11-02 |
| order.vanity | Order vanity & fixtures | 2026-10-12 | 2026-10-12 |
| wait.vanity | Vanity supplier lead time | 2026-10-12 | 2026-10-26 |
| checkpoint.vanity_arrived | Vanity delivered | 2026-10-26 | 2026-10-26 |
| order.flooring | Order flooring | 2026-10-12 | 2026-10-12 |
| wait.flooring | Flooring supplier lead time | 2026-10-12 | 2026-10-22 |
| checkpoint.flooring_arrived | Flooring delivered | 2026-10-22 | 2026-10-22 |
| order.paint | Order paint | 2026-10-12 | 2026-10-12 |
| order.shower_glass_template | Template shower glass | 2026-12-18 | 2026-12-18 |
| wait.shower_glass | Shower glass fabrication | 2026-12-21 | 2027-01-04 |
| checkpoint.shower_glass_arrived | Shower glass ready to install | 2027-01-05 | 2027-01-05 |
| equipment.dumpster_arrive | Dumpster arrives | 2026-10-12 | 2026-10-12 |
| general.site_setup | Site protection & staging | 2026-10-12 | 2026-10-12 |
| prep.heat_pump_relocate | Relocate existing heat pump | 2026-10-13 | 2026-10-13 |
| prep.electrical_disconnect_relocate | Relocate electrical disconnect | 2026-10-13 | 2026-10-13 |
| early.acrylic_shower_swap | Hall bath acrylic shower swap (customer early item) | 2026-10-13 | 2026-10-13 |
| equipment.mini_ex_arrive | Mini-excavator arrives | 2026-10-20 | 2026-10-20 |
| demo.walkway_and_obstructions | Saw-cut walkway, remove railroad ties & obstructions | 2026-10-16 | 2026-10-16 |
| demo.expose_bearing_wall | Expose existing load-bearing wall for LVL | 2026-10-19 | 2026-10-19 |
| demo.hall_bath_window | Hall bath window infill demo | 2026-10-19 | 2026-10-19 |
| demo.haul_out | Haul out demo debris | 2026-10-20 | 2026-10-20 |
| excavation.dig | Excavate footings + slab area | 2026-10-21 | 2026-10-22 |
| foundation.form_and_prep | Form footings + gravel + vapor + rebar | 2026-10-23 | 2026-10-26 |
| inspect.footing | Footing/slab inspection | 2026-10-27 | 2026-10-27 |
| foundation.monolithic_pour | Monolithic pour (footings + slab) | 2026-10-28 | 2026-10-28 |
| foundation.cure | Concrete cure | 2026-10-29 | 2026-10-30 |
| framing.floor_system | Floor system + subfloor | 2026-11-02 | 2026-11-03 |
| framing.basement_walls | Basement 2x4 walls | 2026-11-02 | 2026-11-03 |
| framing.exterior_walls | Exterior & interior walls (2nd floor) | 2026-11-04 | 2026-11-06 |
| framing.elevator_shaft | Frame future elevator shaft (4'x4') | 2026-11-05 | 2026-11-05 |
| structural.temp_shoring | Temporary shoring for LVL | 2026-10-20 | 2026-10-20 |
| structural.install_lvl | Install LVL beam (3-ply 14", ~15'-6" span) | 2026-10-26 | 2026-10-27 |
| structural.remove_temp_shoring | Remove temp shoring | 2026-10-28 | 2026-10-28 |
| framing.roof | Roof framing (stick-frame) | 2026-11-09 | 2026-11-11 |
| roof.concealed_buffer | Concealed roof tie-in buffer | 2026-11-10 | 2026-11-12 |
| framing.sheathing | Roof sheathing | 2026-11-12 | 2026-11-12 |
| windows.install | Install windows & exterior door | 2026-11-12 | 2026-11-13 |
| roofing.underlayment | Synthetic underlayment, drip edge, flashing | 2026-11-13 | 2026-11-13 |
| roofing.shingles | Architectural shingles + ridge vent | 2026-11-16 | 2026-11-16 |
| exterior.sheathing_wrb | Sheathing + WRB | 2026-11-09 | 2026-11-09 |
| milestone.dried_in | Building dried in | 2026-11-17 | 2026-11-17 |
| exterior.siding_trim_gutters | Vinyl siding + fascia/soffit + seamless gutters | 2026-11-17 | 2026-11-19 |
| electrical.rough_in | Electrical rough-in + subpanel | 2026-11-16 | 2026-11-18 |
| plumbing.tank_set | Set tankless water heater | 2026-11-16 | 2026-11-16 |

| ID | Task | Start | Finish |
| --- | --- | --- | --- |
| plumbing.rough_in | Plumbing rough-in (master bath + W/D relocate) | 2026-11-16 | 2026-11-19 |
| hvac.minisplit_rough | Mini-split line set rough | 2026-11-16 | 2026-11-16 |
| hvac.wh_vent_extend | Extend gas WH vent through new roof | 2026-11-17 | 2026-11-17 |
| inspect.rough_bundled | Bundled rough MEP + framing inspection | 2026-11-20 | 2026-11-20 |
| buffer.post_rough_inspection | Post-inspection punch buffer | 2026-11-23 | 2026-11-24 |
| insulation.install | Insulation & air sealing | 2026-11-25 | 2026-11-25 |
| inspect.insulation | Insulation inspection | 2026-12-01 | 2026-12-01 |
| equipment.drywall_dumpster | Drywall dumpster swap | 2026-12-01 | 2026-12-01 |
| drywall.consolidated | Drywall hang/tape/sand (addition + retrofit) | 2026-12-02 | 2026-12-08 |
| paint.phase_1 | Paint phase 1 (primer + ceiling finish) | 2026-12-09 | 2026-12-09 |
| tile.shower_substrate | Shower substrate & waterproofing (Kerdi/Wedi) | 2026-12-10 | 2026-12-11 |
| tile.shower_walls_floor | Tile shower walls + bathroom floor | 2026-12-11 | 2026-12-16 |
| tile.grout_seal | Grout & seal | 2026-12-17 | 2026-12-18 |
| flooring.install | LVP flooring install | 2026-12-11 | 2026-12-15 |
| trim.install | Trim & interior carpentry | 2026-12-15 | 2026-12-17 |
| cabinets.vanity_install | Install vanity | 2026-12-15 | 2026-12-15 |
| retrofit.hall_bath_window_infill | Hall bath window infill (framing/insulation patch) | 2026-10-19 | 2026-10-19 |
| retrofit.hallway_switch_relocate | Relocate hallway switch (drywall patch, prime, paint) | 2026-12-09 | 2026-12-09 |
| electrical.finish | Electrical finish (recessed, vanity lights, outlets, dimmers) | 2026-12-10 | 2026-12-11 |
| plumbing.finish | Plumbing finish (fixtures + trim) | 2026-12-18 | 2026-12-21 |
| hvac.minisplit_install | Mini-split install | 2026-12-14 | 2026-12-14 |
| glazing.shower_install | Install shower glass enclosure | 2027-01-05 | 2027-01-05 |
| paint.phase_2 | Paint phase 2 (final wall coat) | 2026-12-22 | 2026-12-22 |
| milestone.substantial_completion | Substantial completion | 2026-12-23 | 2026-12-23 |
| closeout.pm_walkthrough | PM walkthrough + punch list generation | 2026-12-23 | 2026-12-23 |
| closeout.punch_list_work | Punch-list work | 2026-12-23 | 2026-12-29 |
| closeout.final_clean | Final clean | 2026-12-29 | 2026-12-30 |
| inspect.final_bundled | Final bundled inspection (E/P/M + building) | 2027-01-04 | 2027-01-04 |
| closeout.wills_walkthrough | Will's final walkthrough with customer | 2027-01-06 | 2027-01-06 |

## Version 2 (saved 2026-07-14)

Note of the change: [schedule-derive] schedule.json from task_graph.json (batch drag-resize · 1 edit)

Last finish 2027-01-06 → 2027-01-13 (+7d).

Added:

| ID | Task | Start | Finish |
| --- | --- | --- | --- |
| customer.contact_zach | Call Zach (John's brother) — request $1,250 first payment | 2026-10-09 | 2026-10-09 |
| order.lvt | Order LVT / flooring | 2026-10-12 | 2026-10-12 |
| wait.lvt | Flooring supplier delivery | 2026-10-13 | 2026-10-22 |
| checkpoint.lvt_arrived | Flooring on site | 2026-10-23 | 2026-10-23 |
| equipment.excavator_arrive | Mini-excavator delivered | 2026-10-12 | 2026-10-12 |
| demo.sawcut_walkway | Saw cut & remove concrete walkway portions | 2026-10-15 | 2026-10-15 |
| demo.site_obstructions | Remove railroad ties & site obstructions | 2026-10-15 | 2026-10-15 |
| roofing.trim_gutters | Fascia + soffit + seamless gutters | 2026-11-19 | 2026-11-20 |
| exterior.siding | Vinyl siding install | 2026-11-23 | 2026-11-25 |
| tile.shower_install | Custom tile shower install | 2026-12-17 | 2026-12-22 |
| retrofit.electrical_switch_relocate | Relocate hallway switch (patch/prime/paint) | 2026-12-14 | 2026-12-14 |
| closeout.punch_work | Punch-list work (multi-trade returns) | 2027-01-05 | 2027-01-06 |

Removed: checkpoint.equipment_confirmed_roof Confirm scaffolding for roof; checkpoint.equipment_confirmed_drywall Confirm drywall dumpster swap; order.flooring Order flooring; wait.flooring Flooring supplier lead time; checkpoint.flooring_arrived Flooring delivered; early.acrylic_shower_swap Hall bath acrylic shower swap (customer early item); equipment.mini_ex_arrive Mini-excavator arrives; demo.walkway_and_obstructions Saw-cut walkway, remove railroad ties & obstructions; demo.hall_bath_window Hall bath window infill demo; framing.elevator_shaft Frame future elevator shaft (4'x4'); exterior.siding_trim_gutters Vinyl siding + fascia/soffit + seamless gutters; equipment.drywall_dumpster Drywall dumpster swap; tile.shower_walls_floor Tile shower walls + bathroom floor; retrofit.hallway_switch_relocate Relocate hallway switch (drywall patch, prime, paint); closeout.punch_list_work Punch-list work

Changed:

| ID | Task | Start | Finish | Other |
| --- | --- | --- | --- | --- |
| permit.tdec_septic | TDEC septic permit process |  |  | was named TDEC septic permit application & review |
| prep.amperage_check | Verify existing service amperage for subpanel |  |  | was named Verify existing service capacity for new subpanel |
| checkpoint.equipment_confirmed_demo | Confirm demo equipment reserved |  |  | was named Confirm demo equipment (dumpster, saw) |
| checkpoint.equipment_confirmed_excavation | Confirm mini-excavator reserved |  |  | was named Confirm mini-ex + concrete supplier |
| wait.windows | Windows & door supplier delivery window | 2026-10-12 → 2026-10-13 (+1d) |  | was named Windows supplier lead time |
| checkpoint.windows_arrived | Windows & door on site | 2026-11-02 → 2026-11-03 (+1d) | 2026-11-02 → 2026-11-03 (+1d) | was named Windows delivered to site |
| order.lvl | Order 3-ply 14" LVL beam |  |  | was named Order LVL beam (3-ply 14") |
| wait.lvl | LVL supplier delivery window | 2026-10-12 → 2026-10-13 (+1d) |  | was named LVL supplier lead time |
| checkpoint.lvl_arrived | LVL beam on site | 2026-10-26 → 2026-10-27 (+1d) | 2026-10-26 → 2026-10-27 (+1d) | was named LVL delivered to site |
| wait.subpanel | Subpanel supplier delivery | 2026-10-12 → 2026-10-13 (+1d) |  | was named Subpanel supplier lead time |
| checkpoint.subpanel_arrived | Subpanel on site | 2026-10-22 → 2026-10-23 (+1d) | 2026-10-22 → 2026-10-23 (+1d) | was named Subpanel delivered |
| wait.minisplit | Mini-split supplier delivery | 2026-10-12 → 2026-10-13 (+1d) | 2026-10-22 → 2026-10-26 (+4d) | was named Mini-split supplier lead time |
| checkpoint.minisplit_arrived | Mini-split on site | 2026-10-22 → 2026-10-27 (+5d) | 2026-10-22 → 2026-10-27 (+5d) | was named Mini-split delivered |
| wait.tankless | Tankless supplier delivery | 2026-10-12 → 2026-10-13 (+1d) |  | was named Tankless supplier lead time |
| checkpoint.tankless_arrived | Tankless WH on site | 2026-10-22 → 2026-10-23 (+1d) | 2026-10-22 → 2026-10-23 (+1d) | was named Tankless delivered |
| order.tile | Order tile for master bath |  |  | was named Order tile (shower + floor) |
| wait.tile | Tile supplier delivery | 2026-10-12 → 2026-10-13 (+1d) | 2026-11-02 → 2026-10-26 (-7d) | was named Tile supplier lead time |
| checkpoint.tile_arrived | Tile on site | 2026-11-02 → 2026-10-27 (-6d) | 2026-11-02 → 2026-10-27 (-6d) | was named Tile delivered |
| order.vanity | Order vanity + fixtures |  |  | was named Order vanity & fixtures |
| wait.vanity | Vanity supplier delivery | 2026-10-12 → 2026-10-13 (+1d) |  | was named Vanity supplier lead time |
| checkpoint.vanity_arrived | Vanity + fixtures on site | 2026-10-26 → 2026-10-27 (+1d) | 2026-10-26 → 2026-10-27 (+1d) | was named Vanity delivered |
| order.shower_glass_template | Template & order shower glass enclosure | 2026-12-18 → 2026-10-12 (-67d) | 2026-12-18 → 2026-10-12 (-67d) | was named Template shower glass |
| wait.shower_glass | Shower glass fabrication | 2026-12-21 → 2026-10-13 (-69d) | 2027-01-04 → 2026-10-22 (-74d) |  |
| checkpoint.shower_glass_arrived | Shower glass ready to install | 2027-01-05 → 2026-10-23 (-74d) | 2027-01-05 → 2026-10-23 (-74d) |  |
| equipment.dumpster_arrive | Dumpster delivered |  |  | was named Dumpster arrives |
| general.site_setup | Site protection & setup | 2026-10-12 → 2026-10-13 (+1d) | 2026-10-12 → 2026-10-13 (+1d) | was named Site protection & staging |
| prep.heat_pump_relocate | Relocate existing heat pump | 2026-10-13 → 2026-10-14 (+1d) | 2026-10-13 → 2026-10-14 (+1d) |  |
| prep.electrical_disconnect_relocate | Relocate electrical disconnect | 2026-10-13 → 2026-10-14 (+1d) | 2026-10-13 → 2026-10-14 (+1d) |  |
| demo.expose_bearing_wall | Open existing load-bearing wall for LVL | 2026-10-19 → 2026-10-16 (-3d) | 2026-10-19 → 2026-10-16 (-3d) | was named Expose existing load-bearing wall for LVL |
| demo.haul_out | Haul-out debris | 2026-10-20 → 2026-10-16 (-4d) | 2026-10-20 → 2026-10-16 (-4d) | was named Haul out demo debris |
| excavation.dig | Excavate for footings & basement | 2026-10-21 → 2026-10-19 (-2d) | 2026-10-22 → 2026-10-20 (-2d) | was named Excavate footings + slab area |
| foundation.form_and_prep | Form footings + gravel + vapor barrier + rebar | 2026-10-23 → 2026-10-21 (-2d) | 2026-10-26 → 2026-10-22 (-4d) | was named Form footings + gravel + vapor + rebar |
| inspect.footing | Footing inspection | 2026-10-27 → 2026-10-26 (-1d) | 2026-10-27 → 2026-10-26 (-1d) | was named Footing/slab inspection |
| foundation.monolithic_pour | Monolithic pour — footings + slab | 2026-10-28 → 2026-10-27 (-1d) | 2026-10-28 → 2026-10-27 (-1d) | was named Monolithic pour (footings + slab) |
| foundation.cure | Concrete cure | 2026-10-29 → 2026-10-28 (-1d) | 2026-10-30 → 2026-10-29 (-1d) |  |
| framing.basement_walls | Frame basement walls 2x4 @16" | 2026-11-02 → 2026-10-30 (-3d) | 2026-11-03 → 2026-11-02 (-1d) | was named Basement 2x4 walls |
| framing.floor_system | Frame second-floor system | 2026-11-02 → 2026-11-03 (+1d) | 2026-11-03 → 2026-11-04 (+1d) | was named Floor system + subfloor |
| structural.temp_shoring | Install temporary shoring | 2026-10-20 → 2026-10-19 (-1d) | 2026-10-20 → 2026-10-19 (-1d) | was named Temporary shoring for LVL |
| structural.install_lvl | Install 3-ply 14" LVL beam | 2026-10-26 → 2026-10-27 (+1d) | 2026-10-27 → 2026-10-28 (+1d) | was named Install LVL beam (3-ply 14", ~15'-6" span) |
| structural.remove_temp_shoring | Remove temporary shoring | 2026-10-28 → 2026-10-29 (+1d) | 2026-10-28 → 2026-10-29 (+1d) | was named Remove temp shoring |
| framing.exterior_walls | Frame exterior & interior walls + elevator shaft | 2026-11-04 → 2026-11-05 (+1d) | 2026-11-06 → 2026-11-10 (+4d) | was named Exterior & interior walls (2nd floor) |
| framing.roof | Frame new gable roof (stick) | 2026-11-09 → 2026-11-12 (+3d) | 2026-11-11 → 2026-11-16 (+5d) | was named Roof framing (stick-frame) |
| roof.concealed_buffer | Concealed roof tie-in discovery buffer | 2026-11-10 → 2026-11-13 (+3d) | 2026-11-12 → 2026-11-17 (+5d) | was named Concealed roof tie-in buffer |
| framing.sheathing | Roof + wall sheathing | 2026-11-12 → 2026-11-16 (+4d) | 2026-11-12 → 2026-11-16 (+4d) | was named Roof sheathing |
| roofing.underlayment | Roof underlayment + drip edge + flashing | 2026-11-13 → 2026-11-17 (+4d) | 2026-11-13 → 2026-11-17 (+4d) | was named Synthetic underlayment, drip edge, flashing |
| windows.install | Install windows & exterior door | 2026-11-12 → 2026-11-16 (+4d) | 2026-11-13 → 2026-11-17 (+4d) |  |
| roofing.shingles | Install architectural shingles + ridge vent | 2026-11-16 → 2026-11-18 (+2d) | 2026-11-16 → 2026-11-18 (+2d) | was named Architectural shingles + ridge vent |
| exterior.sheathing_wrb | Install WRB (weather-resistive barrier) | 2026-11-09 → 2026-11-18 (+9d) | 2026-11-09 → 2026-11-18 (+9d) | was named Sheathing + WRB |
| milestone.dried_in | Dried-in milestone | 2026-11-17 → 2026-11-19 (+2d) | 2026-11-17 → 2026-11-19 (+2d) | was named Building dried in |
| plumbing.tank_set | Set tankless water heater | 2026-11-16 → 2026-11-18 (+2d) | 2026-11-16 → 2026-11-18 (+2d) |  |
| plumbing.rough_in | Plumbing rough-in (master bath + W/D relocation) | 2026-11-16 → 2026-11-19 (+3d) | 2026-11-19 → 2026-11-23 (+4d) | was named Plumbing rough-in (master bath + W/D relocate) |
| electrical.rough_in | Electrical rough-in + subpanel install | 2026-11-16 → 2026-11-18 (+2d) | 2026-11-18 → 2026-11-20 (+2d) | was named Electrical rough-in + subpanel |
| electrical.gas_wh_vent | Extend gas WH vent through new roof | 2026-11-17 → 2026-11-19 (+2d) | 2026-11-17 → 2026-11-19 (+2d) |  |
| hvac.minisplit_rough | Mini-split line set rough | 2026-11-16 → 2026-11-19 (+3d) | 2026-11-16 → 2026-11-20 (+4d) |  |
| inspect.rough_bundled | Bundled rough inspection (elec + plumb + HVAC + framing) | 2026-11-20 → 2026-11-25 (+5d) | 2026-11-20 → 2026-11-25 (+5d) | was named Bundled rough MEP + framing inspection |
| buffer.post_rough_inspection | Post-rough-inspection punch-list buffer | 2026-11-23 → 2026-11-30 (+7d) | 2026-11-24 → 2026-12-01 (+7d) | was named Post-inspection punch buffer |
| insulation.install | Insulation & air sealing | 2026-11-25 → 2026-12-02 (+7d) | 2026-11-25 → 2026-12-02 (+7d) |  |
| inspect.insulation | Insulation inspection | 2026-12-01 → 2026-12-04 (+3d) | 2026-12-01 → 2026-12-04 (+3d) |  |
| drywall.consolidated | Drywall hang + tape + sand (addition + retrofit patches) | 2026-12-02 → 2026-12-07 (+5d) | 2026-12-08 → 2026-12-14 (+6d) | was named Drywall hang/tape/sand (addition + retrofit) |
| paint.phase_1 | Paint phase 1 — primer walls+ceilings AM, ceiling finish PM | 2026-12-09 → 2026-12-14 (+5d) | 2026-12-09 → 2026-12-14 (+5d) | was named Paint phase 1 (primer + ceiling finish) |
| tile.shower_substrate | Waterproofing + shower substrate (Kerdi/Wedi) | 2026-12-10 → 2026-12-15 (+5d) | 2026-12-11 → 2026-12-16 (+5d) | was named Shower substrate & waterproofing (Kerdi/Wedi) |
| tile.grout_seal | Tile grout + seal | 2026-12-17 → 2026-12-28 (+11d) | 2026-12-18 → 2026-12-28 (+10d) | was named Grout & seal |
| flooring.install | Flooring install (LVT) | 2026-12-11 → 2026-12-17 (+6d) | 2026-12-15 → 2026-12-18 (+3d) | was named LVP flooring install |
| trim.install | Interior trim/base/case | 2026-12-15 → 2026-12-21 (+6d) | 2026-12-17 → 2026-12-23 (+6d) | was named Trim & interior carpentry |
| cabinets.vanity_install | Install vanity + closet built-ins | 2026-12-15 → 2026-12-21 (+6d) | 2026-12-15 → 2026-12-21 (+6d) | was named Install vanity |
| retrofit.hall_bath_window_infill | Hall bath modification (framing/patch) | 2026-10-19 → 2026-12-11 (+53d) | 2026-10-19 → 2026-12-11 (+53d) | was named Hall bath window infill (framing/insulation patch) |
| paint.phase_2 | Paint phase 2 — final wall coat | 2026-12-22 → 2026-12-31 (+9d) | 2026-12-22 → 2026-12-31 (+9d) | was named Paint phase 2 (final wall coat) |
| milestone.substantial_completion | Substantial completion | 2026-12-23 → 2027-01-04 (+12d) | 2026-12-23 → 2027-01-04 (+12d) |  |
| electrical.finish | Electrical finish — recessed, vanity lights, dimmers, fan/light, outlets | 2026-12-10 → 2026-12-22 (+12d) | 2026-12-11 → 2026-12-23 (+12d) | was named Electrical finish (recessed, vanity lights, outlets, dimmers) |
| plumbing.finish | Plumbing finish — fixtures + sink hookups | 2026-12-18 → 2026-12-29 (+11d) | 2026-12-21 → 2026-12-30 (+9d) | was named Plumbing finish (fixtures + trim) |

| ID | Task | Start | Finish | Other |
| --- | --- | --- | --- | --- |
| hvac.minisplit_install | Mini-split head install & commission | 2026-12-14 → 2026-12-28 (+14d) | 2026-12-14 → 2026-12-28 (+14d) | was named Mini-split install |
| glazing.shower_install | Install shower glass enclosure | 2027-01-05 → 2026-12-29 (-7d) | 2027-01-05 → 2026-12-29 (-7d) |  |
| closeout.pm_walkthrough | PM walkthrough & punch list creation | 2026-12-23 → 2027-01-04 (+12d) | 2026-12-23 → 2027-01-04 (+12d) | was named PM walkthrough + punch list generation |
| closeout.final_clean | Final clean | 2026-12-29 → 2027-01-07 (+9d) | 2026-12-30 → 2027-01-07 (+8d) |  |
| inspect.final_bundled | Bundled final inspection (E/P/M + building) | 2027-01-04 → 2027-01-11 (+7d) | 2027-01-04 → 2027-01-11 (+7d) | was named Final bundled inspection (E/P/M + building) |
| closeout.wills_walkthrough | Will's final walkthrough with customer | 2027-01-06 → 2027-01-13 (+7d) | 2027-01-06 → 2027-01-13 (+7d) |  |

## Version 3 (saved 2026-07-15)

Note of the change: [schedule-derive] schedule.json from task_graph.json (manual delete · pm.meet_howie_tdec)

Last finish stays 2027-01-13.

Added:

| ID | Task | Start | Finish |
| --- | --- | --- | --- |
| pm.meet_howie_dried_in | Meeting with Howie — 1 week after dried-in milestone | 2026-11-20 | 2026-11-20 |

Changed:

| ID | Task | Other |
| --- | --- | --- |
| customer.contact_zach | Call Zach (John's brother) — request $6,150 first payment | was named Call Zach (John's brother) — request $1,250 first payment |
