How a schedule from an exported table changed from version to version. A marks actual dates.

## Version 1 (saved 2026-07-15)

Note of the change: [gen] task_graph + schedule job/JOB-01KXKDMKDY7M23G2WYYDHD02A8 (nodes=96)

| ID | Task | Start | Finish |
| --- | --- | --- | --- |
| general.permitting | Pull building permit | 2026-09-21 | 2026-09-21 |
| general.site_verification | Site verification against plans | 2026-09-14 | 2026-09-14 |
| permit.tdec_septic | TDEC septic permit process | 2026-08-28 | 2026-10-09 |
| prep.amperage_check | Verify existing service amperage for subpanel | 2026-09-21 | 2026-09-21 |
| checkpoint.selections_finalized | Customer selections finalized | 2026-09-21 | 2026-09-21 |
| checkpoint.equipment_confirmed_demo | Confirm demo equipment reserved | 2026-09-28 | 2026-09-28 |
| checkpoint.equipment_confirmed_foundation | Confirm foundation equipment reserved | 2026-09-28 | 2026-09-28 |
| order.windows | Order windows | 2026-10-12 | 2026-10-12 |
| wait.windows | Windows supplier lead time | 2026-10-13 | 2026-11-02 |
| checkpoint.windows_arrived | Windows delivered | 2026-11-03 | 2026-11-03 |
| order.exterior_door | Order exterior door | 2026-10-12 | 2026-10-12 |
| wait.exterior_door | Exterior door supplier lead | 2026-10-13 | 2026-11-02 |
| checkpoint.exterior_door_arrived | Exterior door delivered | 2026-11-03 | 2026-11-03 |
| order.lvl | Order LVL beam | 2026-10-12 | 2026-10-12 |
| wait.lvl | LVL supplier lead | 2026-10-13 | 2026-10-26 |
| checkpoint.lvl_arrived | LVL delivered | 2026-10-27 | 2026-10-27 |
| order.subpanel | Order 100A subpanel | 2026-10-12 | 2026-10-12 |
| wait.subpanel | Subpanel supplier lead | 2026-10-13 | 2026-10-22 |
| checkpoint.subpanel_arrived | Subpanel delivered | 2026-10-23 | 2026-10-23 |
| order.minisplit | Order mini-split unit | 2026-10-12 | 2026-10-12 |
| wait.minisplit | Mini-split supplier lead | 2026-10-13 | 2026-10-26 |
| checkpoint.minisplit_arrived | Mini-split delivered | 2026-10-27 | 2026-10-27 |
| order.tankless | Order tankless water heater | 2026-10-12 | 2026-10-12 |
| wait.tankless | Tankless WH supplier lead | 2026-10-13 | 2026-10-26 |
| checkpoint.tankless_arrived | Tankless WH delivered | 2026-10-27 | 2026-10-27 |
| order.tile | Order master bath tile | 2026-10-12 | 2026-10-12 |
| wait.tile | Tile supplier lead | 2026-10-13 | 2026-11-02 |
| checkpoint.tile_arrived | Tile delivered | 2026-11-03 | 2026-11-03 |
| order.flooring | Order flooring (LVP) | 2026-10-12 | 2026-10-12 |
| wait.flooring | Flooring supplier lead | 2026-10-13 | 2026-10-22 |
| checkpoint.flooring_arrived | Flooring delivered | 2026-10-23 | 2026-10-23 |
| order.paint | Order paint | 2026-10-12 | 2026-10-12 |
| order.vanity_fixtures | Order vanity & bath fixtures | 2026-10-12 | 2026-10-12 |
| wait.vanity_fixtures | Vanity/fixtures supplier lead | 2026-10-13 | 2026-10-26 |
| checkpoint.vanity_fixtures_arrived | Vanity & fixtures delivered | 2026-10-27 | 2026-10-27 |
| order.shower_glass | Template & order shower glass | 2027-01-13 | 2027-01-13 |
| wait.shower_glass | Shower glass fab lead | 2027-01-14 | 2027-01-25 |
| checkpoint.shower_glass_arrived | Shower glass delivered | 2027-01-26 | 2027-01-26 |
| equipment.dumpster_arrive | Dumpster delivered | 2026-10-12 | 2026-10-12 |
| general.site_setup | Site setup, protection, staging | 2026-10-13 | 2026-10-13 |
| prep.heat_pump_relocate | Relocate existing heat pump | 2026-10-14 | 2026-10-14 |
| prep.electrical_disconnect_relocate | Relocate electrical disconnect | 2026-10-14 | 2026-10-14 |
| demo.sawcut_walkway | Sawcut and remove concrete walkway | 2026-10-19 | 2026-10-19 |
| demo.site_obstructions | Remove railroad ties and site obstructions | 2026-10-19 | 2026-10-19 |
| demo.interior_bearing_wall | Expose existing load-bearing wall for LVL | 2026-10-20 | 2026-10-20 |
| demo.haul_out | Demo haul-out | 2026-10-21 | 2026-10-21 |
| equipment.miniex_arrive | Mini-ex delivered | 2026-10-22 | 2026-10-22 |
| excavation.dig | Excavate for footings and slab | 2026-10-23 | 2026-10-26 |
| foundation.form_and_prep | Form footings, gravel base, vapor barrier, rebar | 2026-10-27 | 2026-10-28 |
| inspect.footing | Footing inspection | 2026-10-30 | 2026-10-30 |
| foundation.monolithic_pour | Monolithic pour (footings + slab) | 2026-11-02 | 2026-11-02 |
| foundation.cure | Foundation cure | 2026-11-03 | 2026-11-04 |
| framing.floor_system | Basement walls, floor system, subfloor | 2026-11-05 | 2026-11-10 |
| structural.temp_shoring | Temporary shoring for LVL | 2026-10-21 | 2026-10-21 |
| structural.install_lvl | Install 3-ply 14" LVL beam | 2026-10-27 | 2026-10-28 |
| structural.remove_temp_shoring | Remove temporary shoring | 2026-10-29 | 2026-10-29 |
| framing.exterior_walls | Exterior & interior walls + elevator shaft framing | 2026-11-11 | 2026-11-17 |
| framing.roof | Roof framing (stick-frame) | 2026-11-18 | 2026-11-23 |
| roof.concealed_buffer | Concealed roof tie-in discovery buffer | 2026-11-19 | 2026-11-23 |
| framing.sheathing | Roof sheathing | 2026-11-24 | 2026-11-24 |
| roofing.underlayment | Synthetic underlayment + drip edge | 2026-11-25 | 2026-11-25 |
| windows.install | Install windows & exterior door | 2026-11-24 | 2026-11-25 |
| roofing.shingles | Shingles + ridge vent + flashing | 2026-11-30 | 2026-11-30 |
| exterior.wrb_sheathing | Exterior sheathing & WRB | 2026-11-18 | 2026-11-18 |
| milestone.dried_in | Building dried in | 2026-12-01 | 2026-12-01 |
| exterior.siding_trim_gutters | Vinyl siding, fascia, soffit, gutters | 2026-12-01 | 2026-12-04 |
| electrical.rough_in | Rough electrical (subpanel + circuits) | 2026-11-30 | 2026-12-02 |
| plumbing.tank_set | Set tankless water heater | 2026-11-30 | 2026-11-30 |
| plumbing.rough_in | Rough plumbing (master bath + W/D relocation) | 2026-12-01 | 2026-12-03 |
| hvac.minisplit_rough | Mini-split line set rough | 2026-12-02 | 2026-12-02 |

| ID | Task | Start | Finish |
| --- | --- | --- | --- |
| hvac.wh_vent_extend | Extend existing gas WH vent through new roof | 2026-12-01 | 2026-12-01 |
| inspect.rough_bundled | Bundled rough inspection (E/P/M + framing) | 2026-12-07 | 2026-12-07 |
| buffer.post_rough_inspection | Post-rough punch-list buffer | 2026-12-08 | 2026-12-09 |
| insulation.air_seal | Insulation & air sealing | 2026-12-10 | 2026-12-10 |
| inspect.insulation | Insulation inspection | 2026-12-14 | 2026-12-14 |
| equipment.dumpster2_arrive | Second dumpster for drywall | 2026-12-15 | 2026-12-15 |
| drywall.consolidated | Drywall hang, tape, sand (addition + retrofit) | 2026-12-16 | 2026-12-29 |
| paint.phase_1 | Paint phase 1 (prime + ceiling finish) | 2026-12-30 | 2026-12-30 |
| tile.shower_substrate | Shower waterproofing + substrate | 2026-12-31 | 2027-01-04 |
| tile.shower_set | Set custom shower tile | 2027-01-05 | 2027-01-08 |
| tile.grout_seal | Grout & seal shower tile | 2027-01-12 | 2027-01-12 |
| flooring.install | Install flooring | 2027-01-05 | 2027-01-07 |
| cabinets.install | Install vanity | 2027-01-08 | 2027-01-08 |
| trim.install | Trim carpentry (base/case) | 2027-01-08 | 2027-01-13 |
| retrofit.hall_bath_window_infill | Hall bath modifications (retrofit) | 2026-10-22 | 2026-10-22 |
| retrofit.hallway_switch_relocate | Relocate hallway switch (drywall patch, prime, paint) | 2026-12-30 | 2026-12-30 |
| electrical.finish | Electrical finish (trim, devices, fixtures) | 2027-01-08 | 2027-01-12 |
| plumbing.finish | Plumbing finish (fixtures, sink hookup) | 2027-01-26 | 2027-01-27 |
| hvac.minisplit_install | Mini-split install | 2027-01-13 | 2027-01-13 |
| paint.phase_2 | Paint phase 2 (final wall coat) | 2027-01-28 | 2027-01-29 |
| milestone.substantial_completion | Substantial completion | 2027-02-01 | 2027-02-01 |
| closeout.pm_walkthrough | PM walkthrough & punch list | 2027-02-01 | 2027-02-01 |
| closeout.punch_work | Punch-list work (trade returns) | 2027-02-02 | 2027-02-03 |
| closeout.final_clean | Final clean | 2027-02-04 | 2027-02-04 |
| inspect.final_bundled | Bundled final inspection (E/P/M + building) | 2027-02-08 | 2027-02-08 |
| closeout.wills_walkthrough | Owner final walkthrough with customer | 2027-02-10 | 2027-02-10 |

## Version 2 (saved 2026-07-15)

Note of the change: [schedule-derive] schedule.json from task_graph.json (batch drag-resize · 1 edit)

Last finish 2027-02-10 → 2027-02-12 (+2d).

Changed:

| ID | Task | Start | Finish |
| --- | --- | --- | --- |
| permit.tdec_septic | TDEC septic permit process | 2026-08-28 → 2026-09-08 (+11d) |  |
| order.shower_glass | Template & order shower glass | 2027-01-13 → 2027-01-15 (+2d) | 2027-01-13 → 2027-01-15 (+2d) |
| wait.shower_glass | Shower glass fab lead | 2027-01-14 → 2027-01-18 (+4d) | 2027-01-25 → 2027-01-27 (+2d) |
| checkpoint.shower_glass_arrived | Shower glass delivered | 2027-01-26 → 2027-01-28 (+2d) | 2027-01-26 → 2027-01-28 (+2d) |
| framing.floor_system | Basement walls, floor system, subfloor |  | 2026-11-10 → 2026-11-12 (+2d) |
| framing.exterior_walls | Exterior & interior walls + elevator shaft framing | 2026-11-11 → 2026-11-13 (+2d) | 2026-11-17 → 2026-11-19 (+2d) |
| framing.roof | Roof framing (stick-frame) | 2026-11-18 → 2026-11-20 (+2d) | 2026-11-23 → 2026-11-25 (+2d) |
| roof.concealed_buffer | Concealed roof tie-in discovery buffer | 2026-11-19 → 2026-11-23 (+4d) | 2026-11-23 → 2026-11-25 (+2d) |
| framing.sheathing | Roof sheathing | 2026-11-24 → 2026-11-30 (+6d) | 2026-11-24 → 2026-11-30 (+6d) |
| roofing.underlayment | Synthetic underlayment + drip edge | 2026-11-25 → 2026-12-01 (+6d) | 2026-11-25 → 2026-12-01 (+6d) |
| windows.install | Install windows & exterior door | 2026-11-24 → 2026-11-30 (+6d) | 2026-11-25 → 2026-12-01 (+6d) |
| roofing.shingles | Shingles + ridge vent + flashing | 2026-11-30 → 2026-12-02 (+2d) | 2026-11-30 → 2026-12-02 (+2d) |
| exterior.wrb_sheathing | Exterior sheathing & WRB | 2026-11-18 → 2026-11-20 (+2d) | 2026-11-18 → 2026-11-20 (+2d) |
| milestone.dried_in | Building dried in | 2026-12-01 → 2026-12-03 (+2d) | 2026-12-01 → 2026-12-03 (+2d) |
| exterior.siding_trim_gutters | Vinyl siding, fascia, soffit, gutters | 2026-12-01 → 2026-12-03 (+2d) | 2026-12-04 → 2026-12-08 (+4d) |
| electrical.rough_in | Rough electrical (subpanel + circuits) | 2026-11-30 → 2026-12-02 (+2d) | 2026-12-02 → 2026-12-04 (+2d) |
| plumbing.tank_set | Set tankless water heater | 2026-11-30 → 2026-12-02 (+2d) | 2026-11-30 → 2026-12-02 (+2d) |
| plumbing.rough_in | Rough plumbing (master bath + W/D relocation) | 2026-12-01 → 2026-12-03 (+2d) | 2026-12-03 → 2026-12-07 (+4d) |
| hvac.minisplit_rough | Mini-split line set rough | 2026-12-02 → 2026-12-04 (+2d) | 2026-12-02 → 2026-12-04 (+2d) |
| hvac.wh_vent_extend | Extend existing gas WH vent through new roof | 2026-12-01 → 2026-12-03 (+2d) | 2026-12-01 → 2026-12-03 (+2d) |
| inspect.rough_bundled | Bundled rough inspection (E/P/M + framing) | 2026-12-07 → 2026-12-09 (+2d) | 2026-12-07 → 2026-12-09 (+2d) |
| buffer.post_rough_inspection | Post-rough punch-list buffer | 2026-12-08 → 2026-12-10 (+2d) | 2026-12-09 → 2026-12-11 (+2d) |
| insulation.air_seal | Insulation & air sealing | 2026-12-10 → 2026-12-14 (+4d) | 2026-12-10 → 2026-12-14 (+4d) |
| inspect.insulation | Insulation inspection | 2026-12-14 → 2026-12-16 (+2d) | 2026-12-14 → 2026-12-16 (+2d) |
| equipment.dumpster2_arrive | Second dumpster for drywall | 2026-12-15 → 2026-12-17 (+2d) | 2026-12-15 → 2026-12-17 (+2d) |
| drywall.consolidated | Drywall hang, tape, sand (addition + retrofit) | 2026-12-16 → 2026-12-18 (+2d) | 2026-12-29 → 2026-12-31 (+2d) |
| paint.phase_1 | Paint phase 1 (prime + ceiling finish) | 2026-12-30 → 2027-01-04 (+5d) | 2026-12-30 → 2027-01-04 (+5d) |
| tile.shower_substrate | Shower waterproofing + substrate | 2026-12-31 → 2027-01-05 (+5d) | 2027-01-04 → 2027-01-06 (+2d) |
| tile.shower_set | Set custom shower tile | 2027-01-05 → 2027-01-07 (+2d) | 2027-01-08 → 2027-01-12 (+4d) |
| tile.grout_seal | Grout & seal shower tile | 2027-01-12 → 2027-01-14 (+2d) | 2027-01-12 → 2027-01-14 (+2d) |
| flooring.install | Install flooring | 2027-01-05 → 2027-01-07 (+2d) | 2027-01-07 → 2027-01-11 (+4d) |
| cabinets.install | Install vanity | 2027-01-08 → 2027-01-12 (+4d) | 2027-01-08 → 2027-01-12 (+4d) |
| trim.install | Trim carpentry (base/case) | 2027-01-08 → 2027-01-12 (+4d) | 2027-01-13 → 2027-01-15 (+2d) |
| retrofit.hallway_switch_relocate | Relocate hallway switch (drywall patch, prime, paint) | 2026-12-30 → 2027-01-04 (+5d) | 2026-12-30 → 2027-01-04 (+5d) |
| electrical.finish | Electrical finish (trim, devices, fixtures) | 2027-01-08 → 2027-01-12 (+4d) | 2027-01-12 → 2027-01-14 (+2d) |
| plumbing.finish | Plumbing finish (fixtures, sink hookup) | 2027-01-26 → 2027-01-28 (+2d) | 2027-01-27 → 2027-01-29 (+2d) |
| hvac.minisplit_install | Mini-split install | 2027-01-13 → 2027-01-15 (+2d) | 2027-01-13 → 2027-01-15 (+2d) |
| paint.phase_2 | Paint phase 2 (final wall coat) | 2027-01-28 → 2027-02-01 (+4d) | 2027-01-29 → 2027-02-02 (+4d) |
| milestone.substantial_completion | Substantial completion | 2027-02-01 → 2027-02-03 (+2d) | 2027-02-01 → 2027-02-03 (+2d) |
| closeout.pm_walkthrough | PM walkthrough & punch list | 2027-02-01 → 2027-02-03 (+2d) | 2027-02-01 → 2027-02-03 (+2d) |
| closeout.punch_work | Punch-list work (trade returns) | 2027-02-02 → 2027-02-04 (+2d) | 2027-02-03 → 2027-02-05 (+2d) |
| closeout.final_clean | Final clean | 2027-02-04 → 2027-02-08 (+4d) | 2027-02-04 → 2027-02-08 (+4d) |
| inspect.final_bundled | Bundled final inspection (E/P/M + building) | 2027-02-08 → 2027-02-10 (+2d) | 2027-02-08 → 2027-02-10 (+2d) |
| closeout.wills_walkthrough | Owner final walkthrough with customer | 2027-02-10 → 2027-02-12 (+2d) | 2027-02-10 → 2027-02-12 (+2d) |

## Version 3 (saved 2026-08-03)

Note of the change: [schedule-derive] schedule.json from task_graph.json (manual · rederive (holidays or calendar edit))

Last finish stays 2027-02-12.

Added:

| ID | Task | Start | Finish |
| --- | --- | --- | --- |
| pm.meet_howie | Meeting with Howie | 2026-09-15 | 2026-09-15 |
