How a schedule from an exported table changed from version to version. A marks actual dates.

## Version 1 (saved 2026-09-09)

Note of the change: [gen] task_graph v2 + schedule job/JOB-01M23Q5EHB3CK7RJ3W1FPCDAYM (tasks=24, structure v9)

| ID | Task | Start | Finish |
| --- | --- | --- | --- |
| proc_foundation_package | Foundation | 2026-12-16 | 2026-12-22 |
| proc_framing_package | Framing Package | 2026-12-28 | 2027-01-06 |
| proc_tile | Tile & setting materials | 2026-12-10 | 2026-12-18 |
| proc_concrete_patio | Concrete + Patio Work | 2026-12-18 | 2026-12-18 |
| permit_building | Building permit | 2026-12-07 | 2026-12-18 |
| site_and_structure_demo | Demolition (site + structure at addition footprint) | 2026-12-21 | 2026-12-22 |
| site_prep | Site prep (protection, staging, access) | 2026-12-23 | 2026-12-23 |
| excavation | Excavation (footings, slab, access) | 2026-12-28 | 2026-12-29 |
| foundation | Foundation (form, inspect, pour) | 2026-12-30 | 2027-01-04 |
| site_foundation.end | Site Prep & Foundation — complete | 2027-01-05 | 2027-01-05 |
| framing_shell.start | Framing & Shell — start | 2027-01-12 | 2027-01-12 |
| framing | Framing (floor, walls, roof structure, sheathing) | 2027-01-12 | 2027-01-21 |
| roofing | Roofing (underlayment, shingles, flashing, tie-in blend) | 2027-01-22 | 2027-01-25 |
| siding | Siding (WRB, siding, tie-in blend) | 2027-01-22 | 2027-01-25 |
| extra.1 | Screen enclosure install (spline track, screen, screen door) | 2027-01-26 | 2027-01-28 |
| exterior_finishes.end | Exterior Finishes — complete | 2027-01-26 | 2027-01-26 |
| bundled_rough_inspections | Rough inspections (MEPs then framing, bundled) | 2027-01-26 | 2027-01-26 |
| rough_inspections.end | Rough Inspections — complete | 2027-01-27 | 2027-01-27 |
| finish_carpentry | Finish Carpentry | 2027-01-27 | 2027-01-28 |
| extra.2 | Fireplace veneer, hearth & mantel | 2027-01-27 | 2027-02-01 |
| closeout.start | Closeout — start | 2027-02-02 | 2027-02-02 |
| customer_walkthrough | Customer walkthrough & punch list | 2027-02-02 | 2027-02-02 |
| final_inspections | Final inspections (building + E/P/M, bundled) | 2027-02-03 | 2027-02-03 |
| job_complete | Job complete (owner walkthrough with customer) | 2027-02-05 | 2027-02-05 |

## Version 2 (saved 2026-09-09)

Note of the change: [schedule-derive] schedule.json from task_graph.json (manual · rederive (holidays or calendar edit))

Last finish 2027-02-05 → 2027-04-13 (+67d).

Changed:

| ID | Task | Start | Finish |
| --- | --- | --- | --- |
| proc_foundation_package | Foundation | 2026-12-16 → 2027-02-24 (+70d) | 2026-12-22 → 2027-03-02 (+70d) |
| proc_framing_package | Framing Package | 2026-12-28 → 2027-03-04 (+66d) | 2027-01-06 → 2027-03-12 (+65d) |
| proc_tile | Tile & setting materials | 2026-12-10 → 2027-02-18 (+70d) | 2026-12-18 → 2027-02-26 (+70d) |
| proc_concrete_patio | Concrete + Patio Work | 2026-12-18 → 2027-02-26 (+70d) | 2026-12-18 → 2027-02-26 (+70d) |
| permit_building | Building permit | 2026-12-07 → 2027-02-15 (+70d) | 2026-12-18 → 2027-02-26 (+70d) |
| site_and_structure_demo | Demolition (site + structure at addition footprint) | 2026-12-21 → 2027-03-01 (+70d) | 2026-12-22 → 2027-03-02 (+70d) |
| site_prep | Site prep (protection, staging, access) | 2026-12-23 → 2027-03-03 (+70d) | 2026-12-23 → 2027-03-03 (+70d) |
| excavation | Excavation (footings, slab, access) | 2026-12-28 → 2027-03-04 (+66d) | 2026-12-29 → 2027-03-08 (+69d) |
| foundation | Foundation (form, inspect, pour) | 2026-12-30 → 2027-03-08 (+68d) | 2027-01-04 → 2027-03-10 (+65d) |
| site_foundation.end | Site Prep & Foundation — complete | 2027-01-05 → 2027-03-11 (+65d) | 2027-01-05 → 2027-03-11 (+65d) |
| framing_shell.start | Framing & Shell — start | 2027-01-12 → 2027-03-18 (+65d) | 2027-01-12 → 2027-03-18 (+65d) |
| framing | Framing (floor, walls, roof structure, sheathing) | 2027-01-12 → 2027-03-18 (+65d) | 2027-01-21 → 2027-03-29 (+67d) |
| roofing | Roofing (underlayment, shingles, flashing, tie-in blend) | 2027-01-22 → 2027-03-30 (+67d) | 2027-01-25 → 2027-03-31 (+65d) |
| siding | Siding (WRB, siding, tie-in blend) | 2027-01-22 → 2027-03-30 (+67d) | 2027-01-25 → 2027-03-31 (+65d) |
| extra.1 | Screen enclosure install (spline track, screen, screen door) | 2027-01-26 → 2027-04-01 (+65d) | 2027-01-28 → 2027-04-05 (+67d) |
| exterior_finishes.end | Exterior Finishes — complete | 2027-01-26 → 2027-04-01 (+65d) | 2027-01-26 → 2027-04-01 (+65d) |
| bundled_rough_inspections | Rough inspections (MEPs then framing, bundled) | 2027-01-26 → 2027-04-01 (+65d) | 2027-01-26 → 2027-04-01 (+65d) |
| rough_inspections.end | Rough Inspections — complete | 2027-01-27 → 2027-04-02 (+65d) | 2027-01-27 → 2027-04-02 (+65d) |
| finish_carpentry | Finish Carpentry | 2027-01-27 → 2027-04-02 (+65d) | 2027-01-28 → 2027-04-05 (+67d) |
| extra.2 | Fireplace veneer, hearth & mantel | 2027-01-27 → 2027-04-02 (+65d) | 2027-02-01 → 2027-04-07 (+65d) |
| closeout.start | Closeout — start | 2027-02-02 → 2027-04-08 (+65d) | 2027-02-02 → 2027-04-08 (+65d) |
| customer_walkthrough | Customer walkthrough & punch list | 2027-02-02 → 2027-04-08 (+65d) | 2027-02-02 → 2027-04-08 (+65d) |
| final_inspections | Final inspections (building + E/P/M, bundled) | 2027-02-03 → 2027-04-09 (+65d) | 2027-02-03 → 2027-04-09 (+65d) |
| job_complete | Job complete (owner walkthrough with customer) | 2027-02-05 → 2027-04-13 (+67d) | 2027-02-05 → 2027-04-13 (+67d) |

## Version 3 (saved 2026-09-09)

Note of the change: [schedule-derive] schedule.json from task_graph.json (batch schedule edit · 1 change)

Last finish stays 2027-04-13.

Changed:

| ID | Task | Finish |
| --- | --- | --- |
| excavation | Excavation (footings, slab, access) | 2027-03-08 → 2027-03-09 (+1d) |
